# Metasepi Project

Schedule from Planner, 2014-05-12 to 2015-04-28.

## Calendars

- デフォルト: Mon-Fri 08:00-12:00, 13:00-17:00; Sat-Sun off.

## Schedule

| ID | WBS | Task | Type | Duration | Start | Finish | Predecessors | Constraint | Work |
| --- | --- | --- | --- | --- | --- | --- | --- | --- | --- |
| 1 | 1 | **ATS demo on tiny CPU** |  |  | 2014-05-12 | 2014-05-26 |  |  | 88h |
| 2 | 1.1 | AVR support to ATS |  |  | 2014-05-12 | 2014-05-20 |  |  | 51h |
| 3 | 1.2 | ARM support to ATS |  |  | 2014-05-20 | 2014-05-26 | 2 |  | 37h |
| 4 | 2 | **Translate ATS doc** |  |  | 2014-05-12 | 2014-08-29 |  |  | 640h |
| 5 | 2.1 | ATS2TUTORIAL |  |  | 2014-05-12 | 2014-05-26 |  |  | 88h |
| 6 | 2.2 | INT2PROGINATS |  |  | 2014-05-27 | 2014-06-20 | 5 |  | 152h |
| 7 | 2.3 | BLUISH CODER |  |  | 2014-06-23 | 2014-08-29 | 6 |  | 400h |
| 8 | 3 | **ATS Ethernet driver** |  |  | 2014-05-27 | 2014-08-29 | 5 |  | 550h |
| 9 | 3.1 | Support mbed |  |  | 2014-05-27 | 2014-07-31 |  |  | 384h |
| 10 | 3.2 | Support W5100 |  |  | 2014-08-01 | 2014-08-29 | 9 |  | 166h |
| 11 | 4 | OSC@Nagoya | milestone | 0d | 2014-07-04 | 2014-07-04 |  | must start on 2014-07-04 |  |
| 12 | 5 | OSC@Kansai | milestone | 0d | 2014-08-01 | 2014-08-01 |  | must start on 2014-08-01 |  |
| 13 | 6 | **Web framework** |  |  | 2014-08-29 | 2014-12-19 | 8 |  | 640h |
| 14 | 6.1 | On POSIX |  |  | 2014-08-29 | 2014-09-26 |  |  | 160h |
| 15 | 6.2 | On mbed |  |  | 2014-09-26 | 2014-10-24 | 14 |  | 160h |
| 16 | 6.3 | Wiki application |  |  | 2014-10-24 | 2014-11-21 | 15 |  | 160h |
| 17 | 6.4 | On AVR |  |  | 2014-11-21 | 2014-12-19 | 16 |  | 160h |
| 18 | 7 | **ATS snatches NetBSD** |  |  | 2014-12-19 | 2015-01-30 | 13 |  | 240h |
| 19 | 7.1 | Setup raspberrypi |  |  | 2014-12-19 | 2015-01-09 |  |  | 120h |
| 20 | 7.2 | Choose snatch target |  |  | 2015-01-09 | 2015-01-23 | 19 |  | 80h |
| 21 | 7.3 | Setup ATS config |  |  | 2015-01-23 | 2015-01-30 | 20 |  | 40h |
| 22 | 8 | **ATS package manager** |  |  | 2015-01-30 | 2015-03-03 | 18 |  | 176h |
| 23 | 8.1 | Understand opam design |  |  | 2015-01-30 | 2015-02-20 |  |  | 120h |
| 24 | 8.2 | Get design for ATS |  |  | 2015-02-20 | 2015-03-03 | 23 |  | 56h |
| 25 | 9 | Parsec on ATS |  |  | 2015-03-03 | 2015-03-31 | 22 |  | 160h |
| 26 | 10 | ATS Windows installer |  |  | 2015-03-31 | 2015-04-28 | 25 |  | 160h |
